# lab01

Schedule from MS Project, 2021-03-01 to 2021-09-15, costs in ₽.
Команда разработчиков из 16 человек занимается созданием карты города на основе собственного модуля отображения. Проект должен быть завершен в течение 6 месяцев. Бюджет проекта: 50 000 рублей.

## Calendars

- Standard: Mon-Fri 09:00-12:00, 13:00-18:00; Sat-Sun off. Exceptions (off unless hours are given): 2021-03-08 (Международный женский день), 2021-04-30 09:00-12:00, 13:00-17:00 (Праздник Весны и Труда), 2021-05-03 (Праздник Весны и Труда), 2021-05-10 (День Победы), 2021-06-11 09:00-12:00, 13:00-17:00 (День России), 2021-06-14 (День России).

## Resources

| Resource | Group | Rate | Cost per use |
| --- | --- | --- | --- |
| ведущий программист | программирование | 10 | 100 |
| программист №1 | программирование | 7 | 50 |
| программист №4 | программирование | 7 | 50 |
| программист №3 | программирование | 7 | 50 |
| программист №2 | программирование | 7 | 50 |
| системный аналитик | анализ | 20 | 300 |
| художник-дизайнер | дизайн | 8 | 70 |
| технический писатель | документация | 5 | 20 |
| web-дизайнер | internet | 7 | 50 |
| 3D аниматор | дизайн | 8 | 70 |
| мультимедиа-корреспондент | М-медиа | 3 | 20 |
| наборщик данных №1 | ввод данных | 2 | 10 |
| наборщик данных №5 | ввод данных | 2 | 10 |
| наборщик данных №4 | ввод данных | 2 | 10 |
| наборщик данных №3 | ввод данных | 2 | 10 |
| наборщик данных №2 | ввод данных | 2 | 10 |
| сервер | сервер | 2 |  |

## Schedule

| ID | WBS | Task | Type | Duration | Start | Finish | Predecessors | Total slack | Free slack | Resources | Work | Cost |
| --- | --- | --- | --- | --- | --- | --- | --- | --- | --- | --- | --- | --- |
| 1 | 1 | Начало проекта | milestone | 0w | 2021-03-01 | 2021-03-01 |  | 70d | 0d |  |  |  |
| 2 | 2 | **Создание интерфейса** |  | 110d | 2021-03-01 | 2021-08-06 | 1 | 0d |  |  | 560h | 5,550 |
| 3 | 2.1 | **Разработка дизайна интерфейса** |  | 25d | 2021-03-01 | 2021-04-05 |  | 70d | 0d |  | 320h | 2,770 |
| 4 | 2.1.1 | Разработка 2D графических элементов |  | 3w | 2021-03-01 | 2021-03-22 |  | 70d | 0d | художник-дизайнер | 120h | 1,030 |
| 5 | 2.1.2 | Разработка 3D графических элементов |  | 2w | 2021-03-01 | 2021-03-15 | 4SS | 70d | 0d | 3D аниматор | 80h | 710 |
| 6 | 2.1.3 | Создание заставки |  | 3w | 2021-03-16 | 2021-04-05 | 5 | 70d |  | 3D аниматор | 120h | 1,030 |
| 7 | 2.2 | Программирование интерфейса |  | 3w | 2021-07-16 | 2021-08-06 | 3, 12 | 0d |  | программист №3; программист №4 | 240h | 1,780 |
| 8 | 3 | **Построение базы объектов** |  | 85d | 2021-03-01 | 2021-07-02 |  | 53d |  | сервер | 5674h | 15,438 |
| 9 | 3.1 | Анализ и построение структуры базы объектов |  | 2w | 2021-03-01 | 2021-03-15 |  | 53d | 0d | системный аналитик | 80h | 1,900 |
| 10 | 3.2 | Программирование средств обработки базы объектов |  | 3w | 2021-03-16 | 2021-04-05 | 9 | 53d | 0d | программист №3; программист №4 | 240h | 1,780 |
| 11 | 3.3 | Наполнение базы объектов |  | 12w | 2021-04-06 | 2021-07-02 | 10 | 53d |  | наборщик данных №1; наборщик данных №2; наборщик данных №3; наборщик данных №4; наборщик данных №5 | 2400h | 4,850 |
| 12 | 4 | **Создание ядра GIS** |  | 95d | 2021-03-01 | 2021-07-16 |  | 0d |  |  | 1880h | 18,680 |
| 13 | 4.1 | Анализ и проектирование ядра |  | 3w | 2021-03-01 | 2021-03-22 |  | 0d |  | ведущий программист; системный аналитик | 240h | 4,000 |
| 14 | 4.2 | Создание модели ядра |  | 5w | 2021-03-23 | 2021-04-26 | 13 | 0d |  | ведущий программист; программист №1 | 400h | 3,550 |
| 15 | 4.3 | Тестирование модели ядра |  | 1w | 2021-04-27 | 2021-05-05 | 14 | 0d |  | программист №1 | 40h | 330 |
| 16 | 4.4 | Создание рабочей версии ядра |  | 10w | 2021-05-05 | 2021-07-16 | 15 | 0d |  | ведущий программист; программист №1; программист №2 | 1200h | 9,800 |
| 17 | 5 | Создание мультимедиа – наполнения |  | 6w | 2021-04-06 | 2021-05-20 | 3 | 83d |  | мультимедиа-корреспондент | 240h | 740 |
| 18 | 6 | Создание справочной системы |  | 2w | 2021-08-06 | 2021-08-20 | 7 | 18d |  | технический писатель | 80h | 420 |
| 19 | 7 | **Создание руководства пользователя** |  | 17d | 2021-07-23 | 2021-08-17 | 7FS-10d | 0d |  |  | 160h | 1,010 |
| 20 | 7.1 | Разработка дизайна руководства |  | 1w | 2021-07-23 | 2021-07-30 |  | 0d |  | художник-дизайнер | 40h | 390 |
| 21 | 7.2 | Написание руководства пользователя |  | 3w | 2021-07-27 | 2021-08-17 | 20SS+2d | 0d |  | технический писатель | 120h | 620 |
| 22 | 8 | **Создание web – сайта и поддержка** |  | 21d | 2021-07-27 | 2021-08-25 |  | 0d |  |  | 248h | 2,106 |
| 23 | 8.1 | Разработка структуры сайта |  | 1d | 2021-07-27 | 2021-07-28 | 21SS | 0d |  | web-дизайнер | 8h | 106 |
| 24 | 8.2 | Разработка дизайна сайта |  | 1w | 2021-07-28 | 2021-08-04 | 23 | 0d |  | web-дизайнер; художник-дизайнер; 3D аниматор | 120h | 1,110 |
| 25 | 8.3 | Наполнение сайта |  | 3w | 2021-08-04 | 2021-08-25 | 24 | 0d |  | web-дизайнер | 120h | 890 |
| 26 | 9 | Тестирование сайта |  | 4w | 2021-08-18 | 2021-09-15 | 22FS-1w | 0d |  | ведущий программист; программист №1; программист №2 | 480h | 4,040 |
| 27 | 10 | Сдача сайта в эксплуатацию | milestone | 0w | 2021-09-15 | 2021-09-15 | 26 | 0d |  |  |  |  |
