# lab01

Schedule from MS Project, 2021-03-01 to 2021-08-25, status date 2021-05-05, costs in ₽, A marks actual dates.
Команда разработчиков из 16 человек занимается созданием карты города на основе собственного модуля отображения. Проект должен быть завершен в течение 6 месяцев. Бюджет проекта: 50 000 рублей.

## Calendars

- Standard: Mon-Fri 09:00-12:00, 13:00-18:00; Sat-Sun off. Exceptions (off unless hours are given): 2021-03-08 (Международный женский день), 2021-04-30 09:00-12:00, 13:00-17:00 (Праздник Весны и Труда), 2021-05-03 (Праздник Весны и Труда), 2021-05-10 (День Победы), 2021-06-11 09:00-12:00, 13:00-17:00 (День России), 2021-06-14 (День России).

## Resources

| Resource | Group | Rate | Cost per use |
| --- | --- | --- | --- |
| ведущий программист | программирование | 10 | 100 |
| программист №1 | программирование | 7 | 50 |
| программист №4 | программирование | 7 | 50 |
| программист №3 | программирование | 7 | 50 |
| программист №2 | программирование | 7 | 50 |
| системный аналитик | анализ | 20 | 300 |
| художник-дизайнер | дизайн | 8 | 70 |
| технический писатель | документация | 5 | 20 |
| web-дизайнер | internet | 7 | 50 |
| 3D аниматор | дизайн | 8.8 | 70 |
| мультимедиа-корреспондент | М-медиа | 3 | 20 |
| наборщик данных №1 | ввод данных | 2 | 10 |
| наборщик данных №5 | ввод данных | 2 | 10 |
| наборщик данных №4 | ввод данных | 2 | 10 |
| наборщик данных №3 | ввод данных | 2 | 10 |
| наборщик данных №2 | ввод данных | 2 | 10 |
| сервер | сервер | 2 |  |
| спец. ПО | ПО |  |  |
| свой сервер | сервер |  |  |

## Schedule

| ID | WBS | Task | Type | Duration | Start | Finish | Predecessors | Complete | Remaining | Baseline start | Baseline finish | Baseline duration | Total slack | Free slack | Constraint | Resources | Work | Actual work | Cost | Baseline cost | Actual cost |
| --- | --- | --- | --- | --- | --- | --- | --- | --- | --- | --- | --- | --- | --- | --- | --- | --- | --- | --- | --- | --- | --- |
| 1 | 1 | Начало проекта | milestone | 0w | 2021-03-01 09:00 A | 2021-03-01 09:00 A |  | 100% |  | 2021-03-01 09:00 | 2021-03-01 09:00 | 0w |  |  |  |  |  |  |  |  |  |
| 2 | 2 | **Создание интерфейса** |  | 87.08d | 2021-03-01 09:00 A | 2021-07-06 11:37 | 1 | 85% | 12.68d | 2021-03-01 09:00 | 2021-07-12 15:37 | 91.45d | 4.05d |  |  |  | 592h | 352h | 7,145.2 | 5,550 | 5,115.2 |
| 3 | 2.1 | **Разработка дизайна интерфейса** |  | 28.25d | 2021-03-01 09:00 A | 2021-04-09 11:00 A |  | 100% |  | 2021-03-01 09:00 | 2021-04-06 15:00 | 25.62d |  |  |  | спец. ПО [0.1%] | 352h | 352h | 4,265.2 | 2,770 | 4,265.2 |
| 4 | 2.1.1 | Разработка 2D графических элементов |  | 3.3w | 2021-03-01 09:00 A | 2021-03-24 18:00 A |  | 100% |  | 2021-03-01 09:00 | 2021-03-23 12:00 | 3w |  |  |  | художник-дизайнер | 132h | 132h | 1,126 | 1,030 | 1,126 |
| 5 | 2.1.2 | Разработка 3D графических элементов |  | 2.2w | 2021-03-01 09:00 A | 2021-03-17 12:00 A | 4SS | 100% |  | 2021-03-01 09:00 | 2021-03-16 11:00 | 2w |  |  |  | 3D аниматор | 88h | 88h | 774 | 710 | 774 |
| 6 | 2.1.3 | Создание заставки |  | 3.3w | 2021-03-17 13:00 A | 2021-04-09 11:00 A | 5 | 100% |  | 2021-03-16 11:00 | 2021-04-06 15:00 | 3w |  |  |  | 3D аниматор | 132h | 132h | 1,165.2 | 1,030 | 1,165.2 |
| 7 | 2.2 | Программирование интерфейса |  | 1.5w | 2021-06-24 16:37 | 2021-07-06 11:37 | 3, 12 |  |  | 2021-06-21 15:37 | 2021-07-12 15:37 | 3w | 4.05d | 0d |  | программист №3; программист №4; программист №1; программист №2 | 240h |  | 1,880 | 1,780 |  |
| 8 | 3 | **Построение базы объектов** |  | 99.25d | 2021-03-23 13:00 A | 2021-08-12 17:00 |  | 30% | 69.54d | 2021-03-23 13:00 | 2021-07-23 17:00 | 85.25d | 8.38d |  |  | свой сервер [0.1%]; сервер | 3036h | 351.5h | 14,271.8 | 15,394 | 4,059.5 |
| 9 | 3.1 | Анализ и построение структуры базы объектов |  | 2w | 2021-03-23 13:00 A | 2021-04-06 15:00 A |  | 100% |  | 2021-03-23 13:00 | 2021-04-06 15:00 | 2w |  |  |  | системный аналитик | 80h | 80h | 1,900 | 1,900 | 1,900 |
| 10 | 3.2 | Программирование средств обработки базы объектов |  | 4.9w | 2021-04-06 15:00 A | 2021-05-07 18:00 | 9 | 93% | 0.34w | 2021-04-06 15:00 | 2021-04-27 15:00 | 3w | 8.38d | 0d |  | программист №3; программист №4 | 240h | 219.5h | 1,899 | 1,780 | 1,755.5 |
| 11 | 3.3 | Наполнение базы объектов |  | 15w | 2021-05-07 18:00 | 2021-08-12 17:00 | 10 |  |  | 2021-04-27 15:00 | 2021-07-23 17:00 | 12w | 8.38d |  |  | наборщик данных №2; наборщик данных №3; наборщик данных №4; наборщик данных №5 | 2400h |  | 4,840 | 4,850 |  |
| 12 | 4 | **Создание ядра GIS** |  | 79.58d | 2021-03-01 09:00 A | 2021-06-24 16:37 |  | 57% | 33.97d | 2021-03-01 09:00 | 2021-06-21 15:37 | 76.45d | 4.05d | 0d |  |  | 1880h | 604h | 18,528.87 | 18,292.87 | 7,868 |
| 13 | 4.1 | Анализ и проектирование ядра |  | 3w | 2021-03-01 09:00 A | 2021-03-23 12:00 A |  | 100% |  | 2021-03-01 09:00 | 2021-03-23 12:00 | 3w |  |  |  | ведущий программист; системный аналитик | 240h | 240h | 4,000 | 4,000 | 4,000 |
| 14 | 4.2 | Создание модели ядра |  | 6.45w | 2021-03-23 13:00 A | 2021-05-07 18:00 | 13 | 94% | 0.4w | 2021-03-23 13:00 | 2021-04-27 18:00 | 5.12w | 4.05d | 0d |  | ведущий программист; программист №1; программист №2 | 400h | 364h | 3,636 | 3,550 | 3,298 |
| 15 | 4.3 | Тестирование модели ядра |  | 0.25w | 2021-05-11 09:00 | 2021-05-12 11:00 | 14 |  |  | 2021-04-28 09:00 | 2021-05-06 10:00 | 1w | 4.05d | 0d | start no earlier than 2021-05-11 09:00 | программист №1; программист №2; программист №3; программист №4 | 40h |  | 480 | 330 |  |
| 16 | 4.4 | Создание рабочей версии ядра |  | 6.09w | 2021-05-12 11:00 | 2021-06-24 16:37 | 15 |  |  | 2021-05-06 10:00 | 2021-06-21 15:37 | 6.09w | 4.05d |  |  | ведущий программист; программист №1; программист №2; программист №4; программист №3 | 1200h |  | 9,412.87 | 9,412.87 |  |
| 17 | 5 | Создание мультимедиа – наполнения |  | 6w | 2021-04-09 11:00 A | 2021-05-26 10:00 | 3 | 57% | 2.58w | 2021-04-06 15:00 | 2021-05-21 15:00 | 6w | 64d |  |  | мультимедиа-корреспондент | 240h | 137h | 740 | 740 | 431 |
| 18 | 6 | Создание справочной системы |  | 2w | 2021-07-15 15:37 | 2021-07-29 17:37 | 7 |  |  | 2021-07-23 15:37 | 2021-08-09 10:37 | 2w | 18.3d |  |  | технический писатель | 80h |  | 420 | 420 |  |
| 19 | 7 | **Создание руководства пользователя** |  | 17.38d | 2021-06-22 11:37 | 2021-07-15 15:37 | 7FS-10d |  |  | 2021-06-28 15:37 | 2021-07-22 13:37 | 17.75d | 4.05d |  |  |  | 160h |  | 1,010 | 1,010 |  |
| 20 | 7.1 | Разработка дизайна руководства |  | 1w | 2021-06-22 11:37 | 2021-06-29 13:37 |  |  |  | 2021-06-28 15:37 | 2021-07-05 17:37 | 1w | 4.05d | 0d |  | художник-дизайнер | 40h |  | 390 | 390 |  |
| 21 | 7.2 | Написание руководства пользователя |  | 3w | 2021-06-24 11:37 | 2021-07-15 15:37 | 20SS+2d |  |  | 2021-06-30 15:37 | 2021-07-22 13:37 | 3w | 4.05d | 0d |  | технический писатель | 120h |  | 620 | 620 |  |
| 22 | 8 | **Создание web – сайта и поддержка** |  | 23.62d | 2021-06-24 11:37 | 2021-07-27 17:37 |  |  |  | 2021-06-30 15:37 | 2021-08-03 17:37 | 24.25d | 4.05d | 0d |  |  | 248h |  | 2,138 | 2,106 |  |
| 23 | 8.1 | Разработка структуры сайта |  | 1d | 2021-06-24 11:37 | 2021-06-25 11:37 | 21SS |  |  | 2021-06-30 15:37 | 2021-07-01 15:37 | 1d | 4.05d | 0d |  | web-дизайнер | 8h |  | 106 | 106 |  |
| 24 | 8.2 | Разработка дизайна сайта |  | 1.43w | 2021-06-25 11:37 | 2021-07-06 14:37 | 23 |  |  | 2021-07-01 15:37 | 2021-07-13 10:37 | 1.48w | 4.05d | 0d |  | web-дизайнер; художник-дизайнер; 3D аниматор | 120h |  | 1,142 | 1,110 |  |
| 25 | 8.3 | Наполнение сайта |  | 3w | 2021-07-06 14:37 | 2021-07-27 17:37 | 24 |  |  | 2021-07-13 10:37 | 2021-08-03 17:37 | 3w | 4.05d |  |  | web-дизайнер | 120h |  | 890 | 890 |  |
| 26 | 9 | Тестирование сайта |  | 4.2w | 2021-07-20 17:37 | 2021-08-19 10:37 | 22FS-1w |  |  | 2021-07-27 17:37 | 2021-08-26 16:00 | 4.31w | 4.05d | 0d |  | ведущий программист; программист №1; программист №2 | 480h |  | 4,040 | 4,040 |  |
| 27 | 10 | Сдача сайта в эксплуатацию | milestone | 0w | 2021-08-19 10:37 | 2021-08-19 10:37 | 26 |  |  | 2021-08-26 16:00 | 2021-08-26 16:00 | 0w | 4.05d |  |  |  |  |  |  |  |  |

| ID | WBS | Task | Duration | Start | Finish | Complete | Remaining | Baseline start | Baseline finish | Baseline duration | Total slack | Constraint | Resources | Work | Actual work | Cost | Baseline cost | Actual cost |
| --- | --- | --- | --- | --- | --- | --- | --- | --- | --- | --- | --- | --- | --- | --- | --- | --- | --- | --- |
| 28 | 11 | **Совещание** | 120.88d | 2021-03-03 10:00 A | 2021-08-25 11:00 | 38% | 74.38d | 2021-03-03 10:00 | 2021-08-25 11:00 | 120.88d | 0d |  |  | 182h | 70h | 1,602.8 | 1,586 | 614 |
| 29 | 11.1 | Совещание 1 | 1h | 2021-03-03 10:00 A | 2021-03-03 11:00 A | 100% |  | 2021-03-03 10:00 | 2021-03-03 11:00 | 1h |  | start no earlier than 2021-03-03 10:00 | 3D аниматор; web-дизайнер; ведущий программист; мультимедиа-корреспондент; системный аналитик; технический писатель; художник-дизайнер | 7h | 7h | 61 | 61 | 61 |
| 30 | 11.2 | Совещание 2 | 1h | 2021-03-10 10:00 A | 2021-03-10 11:00 A | 100% |  | 2021-03-10 10:00 | 2021-03-10 11:00 | 1h |  | start no earlier than 2021-03-10 10:00 | 3D аниматор; web-дизайнер; ведущий программист; мультимедиа-корреспондент; системный аналитик; технический писатель; художник-дизайнер | 7h | 7h | 61 | 61 | 61 |
| 31 | 11.3 | Совещание 3 | 1h | 2021-03-17 10:00 A | 2021-03-17 11:00 A | 100% |  | 2021-03-17 10:00 | 2021-03-17 11:00 | 1h |  | start no earlier than 2021-03-17 10:00 | 3D аниматор; web-дизайнер; ведущий программист; мультимедиа-корреспондент; системный аналитик; технический писатель; художник-дизайнер | 7h | 7h | 61 | 61 | 61 |
| 32 | 11.4 | Совещание 4 | 1h | 2021-03-24 10:00 A | 2021-03-24 11:00 A | 100% |  | 2021-03-24 10:00 | 2021-03-24 11:00 | 1h |  | start no earlier than 2021-03-24 10:00 | 3D аниматор; web-дизайнер; ведущий программист; мультимедиа-корреспондент; системный аналитик; технический писатель; художник-дизайнер | 7h | 7h | 61 | 61 | 61 |
| 33 | 11.5 | Совещание 5 | 1h | 2021-03-31 10:00 A | 2021-03-31 11:00 A | 100% |  | 2021-03-31 10:00 | 2021-03-31 11:00 | 1h |  | start no earlier than 2021-03-31 10:00 | 3D аниматор; web-дизайнер; ведущий программист; мультимедиа-корреспондент; системный аналитик; технический писатель; художник-дизайнер | 7h | 7h | 61 | 61 | 61 |
| 34 | 11.6 | Совещание 6 | 1h | 2021-04-07 10:00 A | 2021-04-07 11:00 A | 100% |  | 2021-04-07 10:00 | 2021-04-07 11:00 | 1h |  | start no earlier than 2021-04-07 10:00 | 3D аниматор; web-дизайнер; ведущий программист; мультимедиа-корреспондент; системный аналитик; технический писатель; художник-дизайнер | 7h | 7h | 61.8 | 61 | 61.8 |
| 35 | 11.7 | Совещание 7 | 1h | 2021-04-14 10:00 A | 2021-04-14 11:00 A | 100% |  | 2021-04-14 10:00 | 2021-04-14 11:00 | 1h |  | start no earlier than 2021-04-14 10:00 | 3D аниматор; web-дизайнер; ведущий программист; мультимедиа-корреспондент; системный аналитик; технический писатель; художник-дизайнер | 7h | 7h | 61.8 | 61 | 61.8 |
| 36 | 11.8 | Совещание 8 | 1h | 2021-04-21 10:00 A | 2021-04-21 11:00 A | 100% |  | 2021-04-21 10:00 | 2021-04-21 11:00 | 1h |  | start no earlier than 2021-04-21 10:00 | 3D аниматор; web-дизайнер; ведущий программист; мультимедиа-корреспондент; системный аналитик; технический писатель; художник-дизайнер | 7h | 7h | 61.8 | 61 | 61.8 |
| 37 | 11.9 | Совещание 9 | 1h | 2021-04-28 10:00 A | 2021-04-28 11:00 A | 100% |  | 2021-04-28 10:00 | 2021-04-28 11:00 | 1h |  | start no earlier than 2021-04-28 10:00 | 3D аниматор; web-дизайнер; ведущий программист; мультимедиа-корреспондент; системный аналитик; технический писатель; художник-дизайнер | 7h | 7h | 61.8 | 61 | 61.8 |
| 38 | 11.10 | Совещание 10 | 1h | 2021-05-05 10:00 A | 2021-05-05 11:00 A | 100% |  | 2021-05-05 10:00 | 2021-05-05 11:00 | 1h |  | start no earlier than 2021-05-05 10:00 | 3D аниматор; web-дизайнер; ведущий программист; мультимедиа-корреспондент; системный аналитик; технический писатель; художник-дизайнер | 7h | 7h | 61.8 | 61 | 61.8 |
| 39 | 11.11 | Совещание 11 | 1h | 2021-05-12 10:00 | 2021-05-12 11:00 |  |  | 2021-05-12 10:00 | 2021-05-12 11:00 | 1h | 73.88d | start no earlier than 2021-05-12 10:00 | 3D аниматор; web-дизайнер; ведущий программист; мультимедиа-корреспондент; системный аналитик; технический писатель; художник-дизайнер | 7h |  | 61.8 | 61 |  |
| 40 | 11.12 | Совещание 12 | 1h | 2021-05-19 10:00 | 2021-05-19 11:00 |  |  | 2021-05-19 10:00 | 2021-05-19 11:00 | 1h | 68.88d | start no earlier than 2021-05-19 10:00 | 3D аниматор; web-дизайнер; ведущий программист; мультимедиа-корреспондент; системный аналитик; технический писатель; художник-дизайнер | 7h |  | 61.8 | 61 |  |
| 41 | 11.13 | Совещание 13 | 1h | 2021-05-26 10:00 | 2021-05-26 11:00 |  |  | 2021-05-26 10:00 | 2021-05-26 11:00 | 1h | 63.88d | start no earlier than 2021-05-26 10:00 | 3D аниматор; web-дизайнер; ведущий программист; мультимедиа-корреспондент; системный аналитик; технический писатель; художник-дизайнер | 7h |  | 61.8 | 61 |  |
| 42 | 11.14 | Совещание 14 | 1h | 2021-06-02 10:00 | 2021-06-02 11:00 |  |  | 2021-06-02 10:00 | 2021-06-02 11:00 | 1h | 58.88d | start no earlier than 2021-06-02 10:00 | 3D аниматор; web-дизайнер; ведущий программист; мультимедиа-корреспондент; системный аналитик; технический писатель; художник-дизайнер | 7h |  | 61.8 | 61 |  |
| 43 | 11.15 | Совещание 15 | 1h | 2021-06-09 10:00 | 2021-06-09 11:00 |  |  | 2021-06-09 10:00 | 2021-06-09 11:00 | 1h | 53.88d | start no earlier than 2021-06-09 10:00 | 3D аниматор; web-дизайнер; ведущий программист; мультимедиа-корреспондент; системный аналитик; технический писатель; художник-дизайнер | 7h |  | 61.8 | 61 |  |
| 44 | 11.16 | Совещание 16 | 1h | 2021-06-16 10:00 | 2021-06-16 11:00 |  |  | 2021-06-16 10:00 | 2021-06-16 11:00 | 1h | 50d | start no earlier than 2021-06-16 10:00 | 3D аниматор; web-дизайнер; ведущий программист; мультимедиа-корреспондент; системный аналитик; технический писатель; художник-дизайнер | 7h |  | 61.8 | 61 |  |
| 45 | 11.17 | Совещание 17 | 1h | 2021-06-23 10:00 | 2021-06-23 11:00 |  |  | 2021-06-23 10:00 | 2021-06-23 11:00 | 1h | 45d | start no earlier than 2021-06-23 10:00 | 3D аниматор; web-дизайнер; ведущий программист; мультимедиа-корреспондент; системный аналитик; технический писатель; художник-дизайнер | 7h |  | 61.8 | 61 |  |
| 46 | 11.18 | Совещание 18 | 1h | 2021-06-30 10:00 | 2021-06-30 11:00 |  |  | 2021-06-30 10:00 | 2021-06-30 11:00 | 1h | 40d | start no earlier than 2021-06-30 10:00 | 3D аниматор; web-дизайнер; ведущий программист; мультимедиа-корреспондент; системный аналитик; технический писатель; художник-дизайнер | 7h |  | 61.8 | 61 |  |
| 47 | 11.19 | Совещание 19 | 1h | 2021-07-07 10:00 | 2021-07-07 11:00 |  |  | 2021-07-07 10:00 | 2021-07-07 11:00 | 1h | 35d | start no earlier than 2021-07-07 10:00 | 3D аниматор; web-дизайнер; ведущий программист; мультимедиа-корреспондент; системный аналитик; технический писатель; художник-дизайнер | 7h |  | 61.8 | 61 |  |
| 48 | 11.20 | Совещание 20 | 1h | 2021-07-14 10:00 | 2021-07-14 11:00 |  |  | 2021-07-14 10:00 | 2021-07-14 11:00 | 1h | 30d | start no earlier than 2021-07-14 10:00 | 3D аниматор; web-дизайнер; ведущий программист; мультимедиа-корреспондент; системный аналитик; технический писатель; художник-дизайнер | 7h |  | 61.8 | 61 |  |
| 49 | 11.21 | Совещание 21 | 1h | 2021-07-21 10:00 | 2021-07-21 11:00 |  |  | 2021-07-21 10:00 | 2021-07-21 11:00 | 1h | 25d | start no earlier than 2021-07-21 10:00 | 3D аниматор; web-дизайнер; ведущий программист; мультимедиа-корреспондент; системный аналитик; технический писатель; художник-дизайнер | 7h |  | 61.8 | 61 |  |
| 50 | 11.22 | Совещание 22 | 1h | 2021-07-28 10:00 | 2021-07-28 11:00 |  |  | 2021-07-28 10:00 | 2021-07-28 11:00 | 1h | 20d | start no earlier than 2021-07-28 10:00 | 3D аниматор; web-дизайнер; ведущий программист; мультимедиа-корреспондент; системный аналитик; технический писатель; художник-дизайнер | 7h |  | 61.8 | 61 |  |
| 51 | 11.23 | Совещание 23 | 1h | 2021-08-04 10:00 | 2021-08-04 11:00 |  |  | 2021-08-04 10:00 | 2021-08-04 11:00 | 1h | 15d | start no earlier than 2021-08-04 10:00 | 3D аниматор; web-дизайнер; ведущий программист; мультимедиа-корреспондент; системный аналитик; технический писатель; художник-дизайнер | 7h |  | 61.8 | 61 |  |
| 52 | 11.24 | Совещание 24 | 1h | 2021-08-11 10:00 | 2021-08-11 11:00 |  |  | 2021-08-11 10:00 | 2021-08-11 11:00 | 1h | 10d | start no earlier than 2021-08-11 10:00 | 3D аниматор; web-дизайнер; ведущий программист; мультимедиа-корреспондент; системный аналитик; технический писатель; художник-дизайнер | 7h |  | 61.8 | 61 |  |
| 53 | 11.25 | Совещание 25 | 1h | 2021-08-18 10:00 | 2021-08-18 11:00 |  |  | 2021-08-18 10:00 | 2021-08-18 11:00 | 1h | 5d | start no earlier than 2021-08-18 10:00 | 3D аниматор; web-дизайнер; ведущий программист; мультимедиа-корреспондент; системный аналитик; технический писатель; художник-дизайнер | 7h |  | 61.8 | 61 |  |
| 54 | 11.26 | Совещание 26 | 1h | 2021-08-25 10:00 | 2021-08-25 11:00 |  |  | 2021-08-25 10:00 | 2021-08-25 11:00 | 1h | 0d | start no earlier than 2021-08-25 10:00 | 3D аниматор; web-дизайнер; ведущий программист; мультимедиа-корреспондент; системный аналитик; технический писатель; художник-дизайнер | 7h |  | 61.8 | 61 |  |
