# lab01

Schedule from MS Project, 2021-03-01 to 2021-07-30, costs in ₽.
Команда разработчиков из 16 человек занимается созданием карты города на основе собственного модуля отображения. Проект должен быть завершен в течение 6 месяцев. Бюджет проекта: 50 000 рублей.

## Calendars

- Standard: Mon-Fri 09:00-12:00, 13:00-18:00; Sat-Sun off. Exceptions (off unless hours are given): 2021-03-08 (Международный женский день), 2021-04-30 09:00-12:00, 13:00-17:00 (Праздник Весны и Труда), 2021-05-03 (Праздник Весны и Труда), 2021-05-10 (День Победы), 2021-06-11 09:00-12:00, 13:00-17:00 (День России), 2021-06-14 (День России).

## Resources

| Resource | Group | Rate | Cost per use |
| --- | --- | --- | --- |
| ведущий программист | программирование | 10 | 100 |
| программист №1 | программирование | 7 | 50 |
| программист №4 | программирование | 7 | 50 |
| программист №3 | программирование | 7 | 50 |
| программист №2 | программирование | 7 | 50 |
| системный аналитик | анализ | 20 | 300 |
| художник-дизайнер | дизайн | 8 | 70 |
| технический писатель | документация | 5 | 20 |
| web-дизайнер | internet | 7 | 50 |
| 3D аниматор | дизайн | 8 | 70 |
| мультимедиа-корреспондент | М-медиа | 3 | 20 |
| наборщик данных №1 | ввод данных | 2 | 10 |
| наборщик данных №5 | ввод данных | 2 | 10 |
| наборщик данных №4 | ввод данных | 2 | 10 |
| наборщик данных №3 | ввод данных | 2 | 10 |
| наборщик данных №2 | ввод данных | 2 | 10 |
| сервер | сервер | 2 |  |

## Schedule

| ID | WBS | Task | Type | Duration | Start | Finish | Predecessors | Baseline start | Baseline finish | Baseline duration | Total slack | Free slack | Constraint | Resources | Work | Cost | Baseline cost |
| --- | --- | --- | --- | --- | --- | --- | --- | --- | --- | --- | --- | --- | --- | --- | --- | --- | --- |
| 1 | 1 | Начало проекта | milestone | 0w | 2021-03-01 09:00 | 2021-03-01 09:00 |  | 2021-03-01 09:00 | 2021-03-01 09:00 | 0w | 0d |  |  |  |  |  |  |
| 2 | 2 | **Анализ** |  | 25.62d | 2021-03-01 09:00 | 2021-04-06 15:00 |  |  |  |  | 0d |  |  |  | 400h | 6,060 |  |
| 3 | 2.1 | Анализ и построение структуры базы объектов |  | 3.23w | 2021-03-01 09:00 | 2021-03-16 11:00 | 1 | 2021-03-23 13:00 | 2021-04-06 15:00 | 2w | 20.2d | 0d |  | системный аналитик; сервер | 160h | 2,060 | 1,900 |
| 4 | 2.2 | Анализ и проектирование ядра |  | 5w | 2021-03-01 09:00 | 2021-04-06 15:00 | 1 | 2021-03-01 09:00 | 2021-03-23 12:00 | 3w | 0d |  |  | ведущий программист; системный аналитик | 240h | 4,000 | 4,000 |
| 5 | 3 | **Разработка** |  | 51.38d | 2021-03-01 09:00 | 2021-05-14 14:00 |  |  |  |  | 25.62d |  |  |  | 768h | 6,896 |  |
| 6 | 3.1 | Создание модели ядра |  | 5.15w | 2021-04-06 15:00 | 2021-05-14 14:00 | 4 | 2021-03-23 13:00 | 2021-04-27 18:00 | 5.12w | 0d |  |  | ведущий программист; программист №1 | 400h | 3,550 | 3,550 |
| 7 | 3.2 | Разработка 2D графических элементов |  | 3w | 2021-03-01 09:00 | 2021-03-23 12:00 | 1 | 2021-03-01 09:00 | 2021-03-23 12:00 | 3w | 45.12d | 0d |  | художник-дизайнер | 120h | 1,030 | 1,030 |
| 8 | 3.3 | Разработка 3D графических элементов |  | 2w | 2021-03-01 09:00 | 2021-03-16 11:00 | 7SS | 2021-03-01 09:00 | 2021-03-16 11:00 | 2w | 45.12d | 0d |  | 3D аниматор | 80h | 710 | 710 |
| 9 | 3.4 | Разработка дизайна руководства |  | 1w | 2021-04-13 15:00 | 2021-04-20 16:00 | 14FS-10d | 2021-06-28 15:37 | 2021-07-05 17:37 | 1w | 49.08d | 0d |  | художник-дизайнер | 40h | 390 | 390 |
| 10 | 3.5 | Разработка дизайна сайта |  | 1.43w | 2021-04-16 15:00 | 2021-04-27 17:00 | 11 | 2021-07-01 15:37 | 2021-07-13 10:37 | 1.48w | 49.08d | 0d |  | web-дизайнер; художник-дизайнер; 3D аниматор | 120h | 1,110 | 1,110 |
| 11 | 3.6 | Разработка структуры сайта |  | 1d | 2021-04-15 15:00 | 2021-04-16 15:00 | 22SS | 2021-06-30 15:37 | 2021-07-01 15:37 | 1d | 49.08d | 0d |  | web-дизайнер | 8h | 106 | 106 |
| 12 | 4 | **Программирование** |  | 95.2d | 2021-03-16 11:00 | 2021-07-30 15:37 |  |  |  |  | 0d |  |  |  | 2000h | 14,662.87 |  |
| 13 | 4.1 | Создание заставки |  | 3w | 2021-03-16 11:00 | 2021-04-06 15:00 | 8 | 2021-03-16 11:00 | 2021-04-06 15:00 | 3w | 45.12d | 0d |  | 3D аниматор | 120h | 1,030 | 1,030 |
| 14 | 4.2 | Программирование интерфейса |  | 3w | 2021-04-06 15:00 | 2021-04-27 15:00 | 13 | 2021-06-21 15:37 | 2021-07-12 15:37 | 3w | 45.12d | 0d |  | программист №3; программист №4 | 240h | 1,780 | 1,780 |
| 15 | 4.3 | Программирование средств обработки базы объектов |  | 5.25w | 2021-03-16 11:00 | 2021-04-06 11:00 | 3 | 2021-04-06 15:00 | 2021-04-27 15:00 | 3w | 20.2d | 0d |  | программист №3; программист №4; сервер | 360h | 2,020 | 1,780 |
| 16 | 4.4 | Создание рабочей версии ядра |  | 9.82w | 2021-05-21 14:00 | 2021-07-30 15:37 | 24 | 2021-05-06 10:00 | 2021-06-21 15:37 | 6.09w | 0d |  |  | ведущий программист; программист №1; программист №2; программист №4; программист №3 | 1200h | 9,412.87 | 9,412.87 |
| 17 | 4.5 | Создание справочной системы |  | 2w | 2021-05-11 10:00 | 2021-05-25 12:00 | 14 | 2021-07-23 15:37 | 2021-08-09 10:37 | 2w | 47.2d |  | start no earlier than 2021-04-28 09:00 | технический писатель | 80h | 420 | 420 |
| 18 | 5 | **Наполнение** |  | 60d | 2021-04-06 11:00 | 2021-07-02 14:00 |  |  |  |  | 20.2d |  |  |  | 3360h | 8,060 |  |
| 19 | 5.1 | Наполнение базы объектов |  | 21.2w | 2021-04-06 11:00 | 2021-07-02 14:00 | 15 | 2021-04-27 15:00 | 2021-07-23 17:00 | 12w | 20.2d |  |  | наборщик данных №1; наборщик данных №2; наборщик данных №3; наборщик данных №4; наборщик данных №5; сервер | 2880h | 5,810 | 4,850 |
| 20 | 5.2 | Создание мультимедиа – наполнения |  | 6w | 2021-04-06 15:00 | 2021-05-21 15:00 | 13 | 2021-04-06 15:00 | 2021-05-21 15:00 | 6w | 48.95d |  |  | мультимедиа-корреспондент | 240h | 740 | 740 |
| 21 | 5.3 | Наполнение сайта |  | 3w | 2021-04-27 17:00 | 2021-05-21 14:00 | 10 | 2021-07-13 10:37 | 2021-08-03 17:37 | 3w | 49.08d |  |  | web-дизайнер | 120h | 890 | 890 |
| 22 | 5.4 | Написание руководства пользователя |  | 3w | 2021-04-15 15:00 | 2021-05-11 10:00 | 9SS+2d | 2021-06-30 15:37 | 2021-07-22 13:37 | 3w | 49.08d | 0d |  | технический писатель | 120h | 620 | 620 |
| 23 | 6 | **Тестирование** |  | 29.75d | 2021-05-06 14:00 | 2021-06-21 12:00 |  |  |  |  | 5d |  |  |  | 520h | 4,370 |  |
| 24 | 6.1 | Тестирование модели ядра |  | 1w | 2021-05-14 14:00 | 2021-05-21 14:00 | 6 | 2021-04-28 09:00 | 2021-05-06 10:00 | 1w | 0d |  |  | программист №1 | 40h | 330 | 330 |
| 25 | 6.2 | Тестирование сайта |  | 5.95w | 2021-05-06 14:00 | 2021-06-21 12:00 | 6FS-1w | 2021-07-27 17:37 | 2021-08-26 16:00 | 4.31w | 29.33d | 0d |  | ведущий программист; программист №1; программист №2 | 480h | 4,040 | 4,040 |
| 26 | 7 | Сдача сайта в эксплуатацию | milestone | 0w | 2021-06-21 12:00 | 2021-06-21 12:00 | 25 | 2021-08-26 16:00 | 2021-08-26 16:00 | 0w | 29.33d |  |  |  |  |  |  |

| ID | WBS | Task | Duration | Start | Finish | Baseline start | Baseline finish | Baseline duration | Total slack | Constraint | Resources | Work | Cost | Baseline cost |
| --- | --- | --- | --- | --- | --- | --- | --- | --- | --- | --- | --- | --- | --- | --- |
| 27 | 8 | **Совещание** | 100.88d | 2021-03-03 10:00 | 2021-07-28 11:00 | 2021-03-03 10:00 | 2021-08-25 11:00 | 120.88d | 2.45d |  |  | 112h | 976 | 1,586 |
| 28 | 8.1 | Совещание 1 | 1h | 2021-03-03 10:00 | 2021-03-03 11:00 | 2021-03-03 10:00 | 2021-03-03 11:00 | 1h | 103.2d | start no earlier than 2021-03-03 10:00 | 3D аниматор; web-дизайнер; ведущий программист; мультимедиа-корреспондент; системный аналитик; технический писатель; художник-дизайнер | 7h | 61 | 61 |
| 29 | 8.2 | Совещание 2 | 1h | 2021-03-10 10:00 | 2021-03-10 11:00 | 2021-03-10 10:00 | 2021-03-10 11:00 | 1h | 99.2d | start no earlier than 2021-03-10 10:00 | 3D аниматор; web-дизайнер; ведущий программист; мультимедиа-корреспондент; системный аналитик; технический писатель; художник-дизайнер | 7h | 61 | 61 |
| 30 | 8.3 | Совещание 3 | 1h | 2021-03-17 10:00 | 2021-03-17 11:00 | 2021-03-17 10:00 | 2021-03-17 11:00 | 1h | 94.2d | start no earlier than 2021-03-17 10:00 | 3D аниматор; web-дизайнер; ведущий программист; мультимедиа-корреспондент; системный аналитик; технический писатель; художник-дизайнер | 7h | 61 | 61 |
| 31 | 8.4 | Совещание 4 | 1h | 2021-03-24 10:00 | 2021-03-24 11:00 | 2021-03-24 10:00 | 2021-03-24 11:00 | 1h | 89.2d | start no earlier than 2021-03-24 10:00 | 3D аниматор; web-дизайнер; ведущий программист; мультимедиа-корреспондент; системный аналитик; технический писатель; художник-дизайнер | 7h | 61 | 61 |
| 32 | 8.5 | Совещание 5 | 1h | 2021-03-31 10:00 | 2021-03-31 11:00 | 2021-03-31 10:00 | 2021-03-31 11:00 | 1h | 84.2d | start no earlier than 2021-03-31 10:00 | 3D аниматор; web-дизайнер; ведущий программист; мультимедиа-корреспондент; системный аналитик; технический писатель; художник-дизайнер | 7h | 61 | 61 |
| 33 | 8.6 | Совещание 6 | 1h | 2021-04-07 10:00 | 2021-04-07 11:00 | 2021-04-07 10:00 | 2021-04-07 11:00 | 1h | 79.2d | start no earlier than 2021-04-07 10:00 | 3D аниматор; web-дизайнер; ведущий программист; мультимедиа-корреспондент; системный аналитик; технический писатель; художник-дизайнер | 7h | 61 | 61 |
| 34 | 8.7 | Совещание 7 | 1h | 2021-04-14 10:00 | 2021-04-14 11:00 | 2021-04-14 10:00 | 2021-04-14 11:00 | 1h | 74.2d | start no earlier than 2021-04-14 10:00 | 3D аниматор; web-дизайнер; ведущий программист; мультимедиа-корреспондент; системный аналитик; технический писатель; художник-дизайнер | 7h | 61 | 61 |
| 35 | 8.8 | Совещание 8 | 1h | 2021-04-21 10:00 | 2021-04-21 11:00 | 2021-04-21 10:00 | 2021-04-21 11:00 | 1h | 69.2d | start no earlier than 2021-04-21 10:00 | 3D аниматор; web-дизайнер; ведущий программист; мультимедиа-корреспондент; системный аналитик; технический писатель; художник-дизайнер | 7h | 61 | 61 |
| 36 | 8.9 | Совещание 9 | 1h | 2021-04-28 10:00 | 2021-04-28 11:00 | 2021-04-28 10:00 | 2021-04-28 11:00 | 1h | 64.2d | start no earlier than 2021-04-28 10:00 | 3D аниматор; web-дизайнер; ведущий программист; мультимедиа-корреспондент; системный аналитик; технический писатель; художник-дизайнер | 7h | 61 | 61 |
| 37 | 8.10 | Совещание 10 | 1h | 2021-05-05 10:00 | 2021-05-05 11:00 | 2021-05-05 10:00 | 2021-05-05 11:00 | 1h | 60.33d | start no earlier than 2021-05-05 10:00 | 3D аниматор; web-дизайнер; ведущий программист; мультимедиа-корреспондент; системный аналитик; технический писатель; художник-дизайнер | 7h | 61 | 61 |
| 38 | 8.11 | Совещание 11 | 1h | 2021-05-12 10:00 | 2021-05-12 11:00 | 2021-05-12 10:00 | 2021-05-12 11:00 | 1h | 56.33d | start no earlier than 2021-05-12 10:00 | 3D аниматор; web-дизайнер; ведущий программист; мультимедиа-корреспондент; системный аналитик; технический писатель; художник-дизайнер | 7h | 61 | 61 |
| 39 | 8.12 | Совещание 12 | 1h | 2021-05-19 10:00 | 2021-05-19 11:00 | 2021-05-19 10:00 | 2021-05-19 11:00 | 1h | 51.33d | start no earlier than 2021-05-19 10:00 | 3D аниматор; web-дизайнер; ведущий программист; мультимедиа-корреспондент; системный аналитик; технический писатель; художник-дизайнер | 7h | 61 | 61 |
| 40 | 8.13 | Совещание 13 | 1h | 2021-05-26 10:00 | 2021-05-26 11:00 | 2021-05-26 10:00 | 2021-05-26 11:00 | 1h | 46.33d | start no earlier than 2021-05-26 10:00 | 3D аниматор; web-дизайнер; ведущий программист; мультимедиа-корреспондент; системный аналитик; технический писатель; художник-дизайнер | 7h | 61 | 61 |
| 41 | 8.14 | Совещание 14 | 1h | 2021-06-02 10:00 | 2021-06-02 11:00 | 2021-06-02 10:00 | 2021-06-02 11:00 | 1h | 41.33d | start no earlier than 2021-06-02 10:00 | 3D аниматор; web-дизайнер; ведущий программист; мультимедиа-корреспондент; системный аналитик; технический писатель; художник-дизайнер | 7h | 61 | 61 |
| 42 | 8.15 | Совещание 15 | 1h | 2021-06-09 10:00 | 2021-06-09 11:00 | 2021-06-09 10:00 | 2021-06-09 11:00 | 1h | 36.33d | start no earlier than 2021-06-09 10:00 | 3D аниматор; web-дизайнер; ведущий программист; мультимедиа-корреспондент; системный аналитик; технический писатель; художник-дизайнер | 7h | 61 | 61 |
| 43 | 8.16 | Совещание 16 | 1h | 2021-06-16 10:00 | 2021-06-16 11:00 | 2021-06-16 10:00 | 2021-06-16 11:00 | 1h | 32.45d | start no earlier than 2021-06-16 10:00 | 3D аниматор; web-дизайнер; ведущий программист; мультимедиа-корреспондент; системный аналитик; технический писатель; художник-дизайнер | 7h | 61 | 61 |
| 44 | 8.17 | Совещание 17 | 1h | 2021-06-23 10:00 | 2021-06-23 11:00 |  |  |  | 27.45d | start no earlier than 2021-06-23 10:00 |  |  |  |  |
| 45 | 8.18 | Совещание 18 | 1h | 2021-06-30 10:00 | 2021-06-30 11:00 |  |  |  | 22.45d | start no earlier than 2021-06-30 10:00 |  |  |  |  |
| 46 | 8.19 | Совещание 19 | 1h | 2021-07-07 10:00 | 2021-07-07 11:00 |  |  |  | 17.45d | start no earlier than 2021-07-07 10:00 |  |  |  |  |
| 47 | 8.20 | Совещание 20 | 1h | 2021-07-14 10:00 | 2021-07-14 11:00 |  |  |  | 12.45d | start no earlier than 2021-07-14 10:00 |  |  |  |  |
| 48 | 8.21 | Совещание 21 | 1h | 2021-07-21 10:00 | 2021-07-21 11:00 |  |  |  | 7.45d | start no earlier than 2021-07-21 10:00 |  |  |  |  |
| 49 | 8.22 | Совещание 22 | 1h | 2021-07-28 10:00 | 2021-07-28 11:00 |  |  |  | 2.45d | start no earlier than 2021-07-28 10:00 |  |  |  |  |
